# Schedule

Schedule from MS Project, 2012-12-05 to 2013-04-30, A marks actual dates.

## Calendars

- Standard: Mon-Fri 20:00-23:59; Sat-Sun 18:00-23:59. Exceptions (off unless hours are given): 2012-12-29 to 2013-01-02 (Nghỉ tết Dương Lịch), 2013-02-08 to 2013-02-17 (Nghỉ tết Âm lịch 2013).

## Resources

| Resource | Group |
| --- | --- |
| Khánh | Leader |
| Thịnh | Member/Tester |
| Vượng | Member/Developer |
| Anh | Member/Tester |

## Schedule

| ID | WBS | Task | Type | Duration | Start | Finish | Complete | Remaining | Total slack | Resources | Work | Actual work |
| --- | --- | --- | --- | --- | --- | --- | --- | --- | --- | --- | --- | --- |
| 1 | 1 | **Initiating** |  | 1d | 2013-01-03 | 2013-01-03 |  |  |  |  | 36h |  |
| 2 | 1.1 | Hold kick off meeting | manual | 1.12d | 2013-01-03 | 2013-01-03 |  |  |  | Khánh; Anh; Thịnh; Vượng | 36h |  |
| 3 | 2 | **Planning** |  | 5.62d | 2013-01-04 | 2013-01-07 |  |  |  |  |  |  |
| 4 | 2.1 | Prepare project introduction | manual | 1d | 2013-01-04 | 2013-01-04 |  |  |  |  |  |  |
| 5 | 2.2 | Develop Software Management Plan | manual | 2d | 2013-01-05 | 2013-01-06 |  |  |  |  |  |  |
| 6 | 2.3 | Review Project Plan | manual | 1d | 2013-01-07 | 2013-01-07 |  |  |  |  |  |  |
| 7 | 3 | **Executing** |  | 65.4d | 2012-12-27 A | 2013-04-30 | 4% | 63.03d |  |  | 805.78h | 87.83h |
| 8 | 3.1 | **Vendor Plugin** |  | 16.08d | 2013-01-04 A | 2013-01-26 | 9% | 14.63d |  | Vượng | 128.73h | 16h |
| 9 | 3.1.1 | Create Mockup | manual | 1d | 2013-01-04 A | 2013-01-04 A | 100% |  |  | Vượng | 8h | 8h |
| 10 | 3.1.2 | Review Mockup | manual | 1d | 2013-01-05 A | 2013-01-05 A | 100% |  |  | Vượng | 8h | 8h |
| 11 | 3.1.3 | Create Basic Design (Architecture Design) | manual | 6.12d | 2013-01-04 | 2013-01-08 |  |  |  |  |  |  |
| 12 | 3.1.4 | Review Basic Design | manual | 1d | 2013-01-09 | 2013-01-09 |  |  |  |  |  |  |
| 13 | 3.1.5 | Create Detail Design | manual | 4d | 2013-01-10 | 2013-01-14 |  |  |  |  |  |  |
| 14 | 3.1.6 | Review Detail Design | manual | 1d | 2013-01-13 | 2013-01-13 |  |  |  |  |  |  |
| 15 | 3.1.7 | Coding | manual | 5d | 2013-01-14 | 2013-01-20 |  |  |  |  |  |  |
| 16 | 3.1.8 | Coding Review | manual | 1d | 2013-01-21 | 2013-01-21 |  |  |  |  |  |  |
| 17 | 3.1.9 | Unit Testing | manual | 2d | 2013-01-22 | 2013-01-23 |  |  |  |  |  |  |
| 18 | 3.1.10 | Vendor Plugin Deliverables | milestone, manual | 0d | 2013-01-24 | 2013-01-24 |  |  |  |  |  |  |
| 19 | 3.2 | **AutoSchedule** |  | 16.44d | 2013-01-03 A | 2013-02-01 | 3% | 15.91d | 0d | Khánh | 322.02h | 9.15h |
| 20 | 3.2.1 | Create Mockup | manual | 1d | 2013-01-03 A | 2013-01-03 | 75% | 0.25d |  | Khánh | 8h | 6h |
| 21 | 3.2.2 | Review Mockup | manual | 1d | 2013-01-04 | 2013-01-04 |  |  |  | Khánh | 8h |  |
| 22 | 3.2.3 | Create Basic Design (Architecture Design) | manual | 6d | 2013-01-05 | 2013-01-13 |  |  |  | Khánh | 39.5h |  |
| 23 | 3.2.4 | Review Basic Design | manual | 1d | 2013-01-14 | 2013-01-14 |  |  |  | Khánh | 8h |  |
| 24 | 3.2.5 | Create Detail Design | manual | 5d | 2013-01-15 | 2013-01-21 |  |  |  | Khánh | 55h |  |
| 25 | 3.2.6 | Review Detail Design | manual | 1d | 2013-01-22 | 2013-01-22 |  |  |  | Khánh | 8h |  |
| 26 | 3.2.7 | Coding | manual | 5d | 2013-01-23 | 2013-01-29 |  |  |  | Khánh | 55h |  |
| 27 | 3.2.8 | Coding Review | manual | 1d | 2013-01-30 | 2013-01-30 |  |  |  | Khánh | 8h |  |
| 28 | 3.2.9 | Unit Testing | manual | 2d | 2013-01-31 | 2013-02-01 |  |  |  | Khánh | 36h |  |
| 29 | 3.2.10 | AutoSchedule Deliverables | milestone, manual | 0d | 2013-01-03 | 2013-01-03 |  |  |  | Khánh |  |  |

Notes:
- 20: Trễ plan so với dự kiến , do leader bị chấn thương

| ID | WBS | Task | Type | Duration | Start | Finish | Complete | Remaining | Total slack | Resources | Work | Actual work |
| --- | --- | --- | --- | --- | --- | --- | --- | --- | --- | --- | --- | --- |
| 30 | 3.3 | **Report** |  | 13.5d | 2013-01-03 A | 2013-01-26 | 11% | 12.04d | 0d | Thịnh | 126.02h | 47.68h |
| 31 | 3.3.1 | Report list | manual | 2d | 2013-01-03 A | 2013-01-04 A | 100% |  |  | Thịnh | 16.02h | 16.02h |
| 32 | 3.3.2 | Review Report List | manual | 1d | 2013-01-03 | 2013-01-03 |  |  |  |  |  |  |
| 33 | 3.3.3 | Report Design + Reviewing | manual | 15d | 2013-01-03 | 2013-01-26 |  |  |  |  |  |  |
| 34 | 3.3.4 | Report Deliverables | manual | 0.5d | 2013-01-03 | 2013-01-03 |  |  |  |  |  |  |
| 35 | 3.4 | **Hub Management** |  | 18.93d | 2013-01-04 A | 2013-02-06 | 4% | 18.23d | 0d | Anh | 205.02h | 15h |
| 36 | 3.4.1 | Create Mockup | manual | 2d | 2013-01-04 A | 2013-01-05 | 50% | 1d |  | Thịnh | 16.02h | 8h |
| 37 | 3.4.2 | Review Mockup | manual | 1d | 2013-01-06 | 2013-01-06 |  |  |  |  |  |  |
| 38 | 3.4.3 | Create Basic Design (Architecture Design) | manual | 5d | 2013-01-07 | 2013-01-13 |  |  |  |  |  |  |
| 39 | 3.4.4 | Review Basic Design | manual | 1d | 2013-01-14 | 2013-01-14 |  |  |  |  |  |  |
| 40 | 3.4.5 | Create Detail Design | manual | 6d | 2013-01-15 | 2013-01-23 |  |  |  |  |  |  |
| 41 | 3.4.6 | Review Detail Design | manual | 1d | 2013-01-24 | 2013-01-24 |  |  |  |  |  |  |
| 42 | 3.4.7 | Coding | manual | 8d | 2013-01-25 | 2013-02-05 |  |  |  |  |  |  |
| 43 | 3.4.8 | Coding Review | manual | 1d | 2013-02-06 | 2013-02-06 |  |  |  |  |  |  |
| 44 | 3.4.9 | Unit Testing | manual | 2d | 2013-01-07 | 2013-01-08 |  |  |  |  |  |  |
| 45 | 3.4.10 | AutoSchedule Deliverables | milestone, manual | 0d | 2013-01-08 | 2013-01-08 |  |  |  |  |  |  |
| 46 | 3.5 | **Web For Vendor Management Product** |  | 0.5d? | 2012-12-27 | 2012-12-27 |  |  |  |  | 24h |  |
| 47 | 3.5.1 | Create Mockup | manual | 4.12d | 2013-01-12 | 2013-01-13 |  |  |  | Anh | 16h |  |
| 48 | 3.5.2 | Review Mockup | manual | 1d | 2013-01-14 | 2013-01-14 |  |  |  | Khánh | 8h |  |
| 49 | 3.5.3 | Create Basic Design (Architecture Design) | manual | 12d | 2013-01-26 | 2013-02-24 |  |  |  |  |  |  |
| 50 | 3.5.4 | Review Basic Design | manual | 1d | 2013-02-24 | 2013-02-24 |  |  |  |  |  |  |
| 51 | 3.5.5 | Coding | manual | 10d | 2013-02-25 | 2013-03-12 |  |  |  |  |  |  |
| 52 | 3.5.6 | Coding Review | manual | 1d | 2013-03-13 | 2013-03-13 |  |  |  |  |  |  |
| 53 | 3.5.7 | Unit Testing | manual | 2d | 2013-03-14 | 2013-03-15 |  |  |  |  |  |  |
| 54 | 3.5.8 | Deliverables | milestone, manual | 0d | 2013-02-16 | 2013-02-16 |  |  |  |  |  |  |

Notes:
- 31: Report list cňn quá sơ sŕi. Tuy nhięn chờ phase khi design report sẽ có nhiều comment hơn
- 36: Vẫn chưa biết về biz của dự án. Thời gian online quá ít vŕ hầu như ko giữ được working time đă commit

| ID | WBS | Task | Type | Duration | Start | Finish | Total slack | Constraint |
| --- | --- | --- | --- | --- | --- | --- | --- | --- |
| 55 | 3.6 | **Testing** |  | 33.52d | 2013-03-01 | 2013-04-22 |  |  |
| 56 | 3.6.1 | Project Scope Studying | manual | 7d | 2013-03-01 | 2013-03-10 |  |  |
| 57 | 3.6.2 | Create Test View Point Document | manual | 7d | 2013-03-11 | 2013-03-21 |  |  |
| 58 | 3.6.3 | Review Test Viewpoint Document | manual | 1d | 2013-03-21 | 2013-03-21 |  |  |
| 59 | 3.6.4 | Create Integration Test Case Document | manual | 10d | 2013-03-20 | 2013-04-04 |  |  |
| 60 | 3.6.5 | Review Integration Test Case Document | manual | 1d | 2013-04-04 | 2013-04-04 |  |  |
| 61 | 3.6.6 | Perform Test | manual | 10d | 2013-04-05 | 2013-04-20 |  |  |
| 62 | 3.6.7 | Review Test Report | manual | 1d | 2013-04-20 | 2013-04-20 |  |  |
| 63 | 3.6.8 | Deliverable: Test Report | milestone, manual | 0d | 2013-04-20 | 2013-04-20 |  |  |
| 64 | 4 | **Monitoring and Controlling** |  | 57.04d | 2013-01-07 | 2013-04-28 | 0d |  |
| 65 | 4.1 | **Weekly Report** |  | 53.8d | 2013-01-13 | 2013-04-28 | 0d |  |
| 66 | 4.1.1 | Weekly Report 1 | manual | 1d | 2013-01-13 | 2013-01-13 |  | start no earlier than 2013-01-13 |
| 67 | 4.1.2 | Weekly Report 2 | manual | 1d | 2013-01-20 | 2013-01-20 |  | start no earlier than 2013-01-20 |
| 68 | 4.1.3 | Weekly Report 3 | manual | 1d | 2013-01-27 | 2013-01-27 |  | start no earlier than 2013-01-27 |
| 69 | 4.1.4 | Weekly Report 4 | manual | 1d | 2013-02-03 | 2013-02-03 |  | start no earlier than 2013-02-03 |
| 70 | 4.1.5 | Weekly Report 5 | manual | 1d | 2013-02-10 | 2013-02-10 |  | start no earlier than 2013-02-10 |
| 71 | 4.1.6 | Weekly Report 6 | manual | 1d | 2013-02-17 | 2013-02-17 |  | start no earlier than 2013-02-17 |
| 72 | 4.1.7 | Weekly Report 7 | manual | 1d | 2013-02-24 | 2013-02-24 |  | start no earlier than 2013-02-24 |
| 73 | 4.1.8 | Weekly Report 8 | manual | 1d | 2013-03-03 | 2013-03-03 |  | start no earlier than 2013-03-03 |
| 74 | 4.1.9 | Weekly Report 9 | manual | 1d | 2013-03-10 | 2013-03-10 |  | start no earlier than 2013-03-10 |
| 75 | 4.1.10 | Weekly Report 10 | manual | 1d | 2013-03-17 | 2013-03-17 |  | start no earlier than 2013-03-17 |
| 76 | 4.1.11 | Weekly Report 11 | manual | 1d | 2013-03-24 | 2013-03-24 |  | start no earlier than 2013-03-24 |
| 77 | 4.1.12 | Weekly Report 12 | manual | 1d | 2013-03-31 | 2013-03-31 |  | start no earlier than 2013-03-31 |
| 78 | 4.1.13 | Weekly Report 13 | manual | 1d | 2013-04-07 | 2013-04-07 |  | start no earlier than 2013-04-07 |
| 79 | 4.1.14 | Weekly Report 14 | manual | 1d | 2013-04-14 | 2013-04-14 |  | start no earlier than 2013-04-14 |
| 80 | 4.1.15 | Weekly Report 15 | manual | 1d | 2013-04-21 | 2013-04-21 |  | start no earlier than 2013-04-21 |
| 81 | 4.1.16 | Weekly Report 16 | manual | 1d | 2013-04-28 | 2013-04-28 |  | start no earlier than 2013-04-28 |

| ID | WBS | Task | Type | Duration | Start | Finish | Total slack | Constraint |
| --- | --- | --- | --- | --- | --- | --- | --- | --- |
| 82 | 4.2 | **Monthly Assesment** |  | 45.08d | 2013-01-07 | 2013-04-07 | 0d |  |
| 83 | 4.2.1 | Monthly Assesment 1 | manual | 1d | 2013-01-07 | 2013-01-07 |  | start no earlier than 2013-01-07 |
| 84 | 4.2.2 | Monthly Assesment 2 | manual | 1d | 2013-02-07 | 2013-02-07 |  | start no earlier than 2013-02-07 |
| 85 | 4.2.3 | Monthly Assesment 3 | manual | 1d | 2013-03-07 | 2013-03-07 |  | start no earlier than 2013-03-07 |
| 86 | 4.2.4 | Monthly Assesment 4 | manual | 1d | 2013-04-07 | 2013-04-07 |  | start no earlier than 2013-04-07 |
| 87 | 5 | Closing | manual | 0.5d? | 2012-12-05 | 2012-12-05 |  |  |
